# WBS-62015005

Schedule from MS Project, 2021-08-02 to 2022-02-01, costs in ฿, A marks actual dates.

## Calendars

- Standard: Mon-Fri 08:00-12:00, 13:00-17:00; Sat-Sun off.

## Resources

| Resource | Rate |
| --- | --- |
| Kandon | 100 |
| Jarinya | 100 |
| Dev Team | 100 |
| Advisor | 100 |

## Schedule

| ID | WBS | Task | Type | Duration | Start | Finish | Predecessors | Complete | Remaining | Actual start | Actual finish | Baseline start | Baseline finish | Baseline duration | Total slack | Free slack | Constraint | Resources | Work | Actual work | Cost | Baseline cost | Actual cost |
| --- | --- | --- | --- | --- | --- | --- | --- | --- | --- | --- | --- | --- | --- | --- | --- | --- | --- | --- | --- | --- | --- | --- | --- |
| 1 | 0 | Start Project | milestone, manual | 0d | 2021-08-02 | 2021-08-02 |  |  |  |  |  | 2021-08-02 | 2021-08-02 | 0d |  |  |  |  |  |  |  |  |  |
| 2 | 1 | **Requirement Analysis** |  | 15d | 2021-08-16 | 2021-09-05 |  | 83% | 2.5d | 2021-08-17 |  | 2021-08-16 | 2021-09-05 | 15d |  |  |  |  | 104h | 88h | 10,400 | 4,000 | 8,800 |
| 3 | 1.1 | **กำหนดขอบเขตโครงงาน** |  | 2d | 2021-08-17 A | 2021-08-18 |  | 100% |  |  | 2021-08-17 | 2021-08-17 | 2021-08-18 | 2d |  |  |  |  | 24h | 24h | 2,400 | 2,400 | 2,400 |
| 4 | 1.1.1 | ระบุขอบเขตและวัตถุประสงค์ |  | 1d | 2021-08-17 A | 2021-08-17 A |  | 100% |  |  |  | 2021-08-17 | 2021-08-17 | 1d |  |  |  | Kandon; Advisor | 16h | 16h | 1,600 | 1,600 | 1,600 |
| 5 | 1.1.2 | ศึกษาข้อมูลที่เกี่ยวข้อง |  | 1d | 2021-08-17 A | 2021-08-17 A | 4FF | 100% |  |  |  | 2021-08-17 | 2021-08-17 | 1d |  |  |  | Jarinya; Kandon | 8h | 8h | 800 | 800 | 800 |
| 6 | 1.2 | **Develop Scope เบื้องต้น** |  | 5d | 2021-08-18 A | 2021-08-24 |  | 100% |  |  | 2021-08-19 | 2021-08-18 | 2021-08-24 | 5d |  |  |  |  | 16h | 16h | 1,600 | 1,600 | 1,600 |
| 7 | 1.2.1 | Functional Requirements |  | 1d | 2021-08-18 A | 2021-08-18 A | 5 | 100% |  |  |  | 2021-08-18 | 2021-08-18 | 1d |  |  |  | Kandon | 8h | 8h | 800 | 800 | 800 |
| 8 | 1.2.2 | Non Functional Requirements |  | 1d | 2021-08-19 A | 2021-08-19 A | 7 | 100% |  |  |  | 2021-08-19 | 2021-08-19 | 1d |  |  |  | Jarinya | 8h | 8h | 800 | 800 | 800 |
| 9 | 1.3 | **Data Preparation** |  | 9d | 2021-08-24 A | 2021-09-03 |  | 75% | 2.25d |  |  | 2021-08-24 | 2021-09-03 | 9d |  |  |  |  | 64h | 48h | 6,400 |  | 4,800 |
| 10 | 1.3.1 | Map Digitization |  | 4d | 2021-08-24 A | 2021-08-27 | 8 | 50% | 2d |  |  | 2021-08-24 | 2021-08-27 | 4d | 112d |  |  | Kandon | 32h | 16h | 3,200 |  | 1,600 |
| 11 | 1.3.2 | เขียน Algorithm ของงาน |  | 4d | 2021-08-30 A | 2021-09-02 A | 10 | 100% |  |  |  | 2021-08-30 | 2021-09-02 | 4d |  |  |  | Jarinya | 32h | 32h | 3,200 |  | 3,200 |
| 12 | 2 | **Design Phase** |  | 13d | 2021-09-06 A | 2021-09-22 |  | 42% | 7.58d |  |  | 2021-09-06 | 2021-09-22 | 13d |  |  |  |  | 72h | 30h | 7,200 | 7,200 | 3,000 |
| 13 | 2.1 | UX/UI Design |  | 3d | 2021-09-06 A | 2021-09-08 | 11 | 75% | 0.75d |  |  | 2021-09-06 | 2021-09-08 | 3d | 0.5d | 0d |  | Kandon | 24h | 18h | 2,400 | 2,400 | 1,800 |
| 14 | 2.2 | Database Design |  | 2d | 2021-09-09 A | 2021-09-10 | 13 | 25% | 1.5d |  |  | 2021-09-09 | 2021-09-10 | 2d | 0.25d | 0d |  | Jarinya | 16h | 4h | 1,600 | 1,600 | 400 |
| 15 | 2.3 | System Architecture Design |  | 1d | 2021-09-13 A | 2021-09-13 | 14 | 25% | 0.75d |  |  | 2021-09-13 | 2021-09-13 | 1d | 0.25d | 0d |  | Kandon | 8h | 2h | 800 | 800 | 200 |
| 16 | 2.4 | Software Architecture Design |  | 1d | 2021-09-14 A | 2021-09-14 | 15 | 25% | 0.75d |  |  | 2021-09-14 | 2021-09-14 | 1d | 0.5d | 0d |  | Jarinya | 8h | 2h | 800 | 800 | 200 |
| 17 | 2.5 | ทบทวนและแก้ปัญการออกแบบ |  | 2d | 2021-09-15 A | 2021-09-16 | 16 | 25% | 1.5d |  |  | 2021-09-15 | 2021-09-15 | 1d | 27d | 0d |  | Kandon | 16h | 4h | 1,600 | 1,600 | 400 |
| 18 | 2.6 | Design Phase Complete | milestone | 0d | 2021-09-16 | 2021-09-16 | 17 |  |  |  |  | 2021-09-15 | 2021-09-15 | 0d | 27d | 0d |  |  |  |  |  |  |  |
| 19 | 3 | **Implementation** |  | 70d? | 2021-09-30 | 2022-01-05 |  | 1% | 69.43d? | 2021-08-18 |  | 2021-09-30 | 2022-01-05 | 70d? |  |  |  |  | 512h |  | 51,200 | 37,600 |  |
| 20 | 3.1 | **Status Update Meeting** |  | 46d | 2021-08-18 A | 2021-10-21 |  | 40% | 27.6d |  |  | 2021-08-18 | 2021-10-21 | 46d |  |  |  |  |  |  |  |  |  |
| 21 | 3.1.1 | Status Update Meeting 1 | manual | 1h | 2021-08-18 A | 2021-08-19 A |  | 100% |  |  |  | 2021-08-18 | 2021-08-19 | 1h |  |  | start no earlier than 2021-08-18 |  |  |  |  |  |  |
| 22 | 3.1.2 | Status Update Meeting 2 | manual | 1h | 2021-08-25 A | 2021-08-26 A |  | 100% |  |  |  | 2021-08-25 | 2021-08-26 | 1h |  |  | start no earlier than 2021-08-25 |  |  |  |  |  |  |
| 23 | 3.1.3 | Status Update Meeting 3 | manual | 1h | 2021-09-01 A | 2021-09-02 A |  | 100% |  |  |  | 2021-09-01 | 2021-09-02 | 1h |  |  | start no earlier than 2021-09-01 |  |  |  |  |  |  |
| 24 | 3.1.4 | Status Update Meeting 4 | manual | 1h | 2021-09-08 | 2021-09-08 |  |  |  |  |  | 2021-09-08 | 2021-09-09 | 1h |  |  | start no earlier than 2021-09-08 |  |  |  |  |  |  |
| 25 | 3.1.5 | Status Update Meeting 5 | manual | 1h | 2021-09-15 A | 2021-09-16 A |  | 100% |  |  |  | 2021-09-15 | 2021-09-16 | 1h |  |  | start no earlier than 2021-09-15 |  |  |  |  |  |  |
| 26 | 3.1.6 | Status Update Meeting 6 | manual | 1h | 2021-09-22 | 2021-09-23 |  |  |  |  |  | 2021-09-22 | 2021-09-23 | 1h |  |  | start no earlier than 2021-09-22 |  |  |  |  |  |  |
| 27 | 3.1.7 | Status Update Meeting 7 | manual | 1h | 2021-09-29 | 2021-09-30 |  |  |  |  |  | 2021-09-29 | 2021-09-30 | 1h |  |  | start no earlier than 2021-09-29 |  |  |  |  |  |  |
| 28 | 3.1.8 | Status Update Meeting 8 | manual | 1h | 2021-10-06 | 2021-10-07 |  |  |  |  |  | 2021-10-06 | 2021-10-07 | 1h |  |  | start no earlier than 2021-10-06 |  |  |  |  |  |  |
| 29 | 3.1.9 | Status Update Meeting 9 | manual | 1h | 2021-10-13 | 2021-10-14 |  |  |  |  |  | 2021-10-13 | 2021-10-14 | 1h |  |  | start no earlier than 2021-10-13 |  |  |  |  |  |  |
| 30 | 4.1.10 | Status Update Meeting 10 | manual | 1h | 2021-10-20 | 2021-10-21 |  |  |  |  |  | 2021-10-20 | 2021-10-21 | 1h |  |  | start no earlier than 2021-10-20 |  |  |  |  |  |  |

| ID | WBS | Task | Duration | Start | Finish | Predecessors | Baseline start | Baseline finish | Baseline duration | Total slack | Free slack | Constraint | Resources | Work | Cost | Baseline cost |
| --- | --- | --- | --- | --- | --- | --- | --- | --- | --- | --- | --- | --- | --- | --- | --- | --- |
| 31 | 3.2 | **Tools Study** | 24d | 2021-09-22 | 2021-10-25 |  | 2021-09-22 | 2021-10-22 | 23d |  |  |  |  | 136h | 13,600 | 12,000 |
| 32 | 3.2.1 | study Vue.js | 5d | 2021-10-01 | 2021-10-07 | 18FS+10d | 2021-09-30 | 2021-10-06 | 5d | 27d | 0d | start no earlier than 2021-09-22 | Kandon | 40h | 4,000 | 4,000 |
| 33 | 3.2.2 | study Python | 5d | 2021-10-08 | 2021-10-14 | 32 | 2021-10-07 | 2021-10-13 | 5d | 27d | 0d |  | Jarinya | 40h | 4,000 | 4,000 |
| 34 | 3.2.3 | study Docker, Json server | 5d | 2021-10-15 | 2021-10-21 | 33 | 2021-10-14 | 2021-10-20 | 5d | 27d | 0d |  | Kandon | 40h | 4,000 | 4,000 |
| 35 | 3.2.4 | Code Testing | 2d | 2021-10-22 | 2021-10-25 | 34 | 2021-10-21 | 2021-10-22 | 2d | 27d | 0d |  | Kandon | 16h | 1,600 |  |
| 36 | 3.3 | **Account & Login Page** | 7d | 2021-10-26 | 2021-11-03 |  | 2021-10-25 | 2021-11-02 | 7d | 27d |  |  |  | 80h | 8,000 | 5,600 |
| 37 | 3.3.1 | Front End Develop | 3d | 2021-10-26 | 2021-10-28 | 35 | 2021-10-25 | 2021-10-27 | 3d | 27d | 0d |  | Kandon | 24h | 2,400 | 2,400 |
| 38 | 3.3.2 | Backend & API Develop | 3d | 2021-10-29 | 2021-11-02 | 37 | 2021-10-28 | 2021-11-01 | 3d | 27d | 0d |  | Jarinya | 24h | 2,400 | 2,400 |
| 39 | 3.3.3 | Using Firebase for Authentication | 2d | 2021-11-01 | 2021-11-02 | 38FF | 2021-10-29 | 2021-11-01 | 2d | 27d | 0d |  | Kandon | 16h | 1,600 |  |
| 40 | 3.3.4 | Testing & Approval | 1d | 2021-11-03 | 2021-11-03 | 39 | 2021-11-02 | 2021-11-02 | 1d | 27d | 0d |  | Kandon; Jarinya | 16h | 1,600 | 800 |
| 41 | 3.4 | **Basic Information Page** | 46d | 2021-10-02 | 2021-12-03 |  | 2021-10-02 | 2021-12-03 | 46d |  |  |  |  | 192h | 19,200 | 12,800 |
| 42 | 3.4.1 | พัฒนา Algorithm | 2d | 2021-11-04 | 2021-11-05 | 40 | 2021-11-03 | 2021-11-04 | 2d | 27d | 0d |  | Jarinya | 16h | 1,600 |  |
| 43 | 3.4.2 | เขียนโปรแกรมส่วน Front End ด้วย Vue.js | 7d | 2021-11-08 | 2021-11-16 | 42 | 2021-11-05 | 2021-11-15 | 7d | 27d | 0d |  | Kandon | 56h | 5,600 | 5,600 |
| 44 | 3.4.3 | เขียนโปรแกรมส่วน Backend ด้วย Python | 7d | 2021-11-08 | 2021-11-16 | 43FF | 2021-11-05 | 2021-11-15 | 7d | 27d | 0d |  | Jarinya | 56h | 5,600 | 5,600 |
| 45 | 3.4.4 | API Web service | 3d | 2021-11-17 | 2021-11-19 | 44 | 2021-11-16 | 2021-11-18 | 3d | 27d | 0d |  | Kandon | 24h | 2,400 |  |
| 46 | 3.4.5 | เขียนส่วน Database | 3d | 2021-11-22 | 2021-11-24 | 45 | 2021-11-19 | 2021-11-23 | 3d | 27d | 0d |  | Kandon | 24h | 2,400 |  |
| 47 | 3.4.6 | Testing & Approval | 1d | 2021-11-25 | 2021-11-25 | 46 | 2021-11-24 | 2021-11-24 | 1d | 27d | 11d |  | Kandon; Jarinya | 16h | 1,600 | 1,600 |
| 48 | 3.5 | **Server & Database** | 6d? | 2021-12-12 | 2021-12-17 |  | 2021-12-12 | 2021-12-17 | 6d? |  |  |  |  | 32h | 3,200 | 1,600 |
| 49 | 3.5.1 | Put Json Server to Docker | 2d | 2021-12-13 | 2021-12-14 | 47 | 2021-12-13 | 2021-12-14 | 2d | 16d | 0d |  | Kandon | 16h | 1,600 |  |
| 50 | 3.5.2 | Get Data form DLT | 2d | 2021-12-15 | 2021-12-16 | 49 | 2021-12-15 | 2021-12-16 | 2d | 16d | 0d |  | Jarinya | 16h | 1,600 | 1,600 |
| 51 | 3.6 | **Test Plan** | 2d | 2021-12-17 | 2021-12-20 |  | 2021-12-17 | 2021-12-20 | 2d |  |  |  |  | 32h | 3,200 | 1,600 |
| 52 | 3.6.1 | Review and Approve Test Plan | 2d | 2021-12-17 | 2021-12-20 | 50 | 2021-12-17 | 2021-12-20 | 2d | 16d | 0d |  | Kandon; Jarinya | 32h | 3,200 | 1,600 |
| 53 | 3.7 | **UAT (User Acceptance Testing) Document** | 3d | 2021-12-21 | 2021-12-23 |  | 2021-12-21 | 2021-12-23 | 3d | 16d |  |  |  | 24h | 2,400 | 2,400 |
| 54 | 3.7.1 | Review UAT Document | 2d | 2021-12-21 | 2021-12-22 | 52 | 2021-12-21 | 2021-12-22 | 2d | 16d | 0d |  | Jarinya | 16h | 1,600 | 1,600 |
| 55 | 3.7.2 | Approve UAT Document | 1d | 2021-12-23 | 2021-12-23 | 54 | 2021-12-23 | 2021-12-23 | 1d | 16d | 0d |  | Kandon | 8h | 800 | 800 |

| ID | WBS | Task | Type | Duration | Start | Finish | Predecessors | Baseline start | Baseline finish | Baseline duration | Total slack | Free slack | Resources | Work | Cost | Baseline cost |
| --- | --- | --- | --- | --- | --- | --- | --- | --- | --- | --- | --- | --- | --- | --- | --- | --- |
| 56 | 3.8 | **Mock Demo - First** |  | 3d | 2021-12-24 | 2021-12-28 |  | 2021-12-24 | 2021-12-28 | 3d |  |  |  | 16h | 1,600 | 1,600 |
| 57 | 3.8.1 | First Demo Meeting |  | 1d | 2021-12-24 | 2021-12-24 | 55 | 2021-12-24 | 2021-12-24 | 1d | 16d | 0d | Kandon | 8h | 800 | 800 |
| 58 | 3.9.2 | Review Notes for First Mock Demo |  | 1d | 2021-12-27 | 2021-12-27 | 57 | 2021-12-27 | 2021-12-27 | 1d | 16d | 7d | Jarinya | 8h | 800 | 800 |
| 59 | 4 | **Acceptance Testing** |  | 7d | 2022-01-06 | 2022-01-14 |  | 2022-01-06 | 2022-01-14 | 7d |  |  |  | 24h | 2,400 | 2,400 |
| 60 | 4.1 | UAT (User Acceptance Testing) |  | 3d | 2022-01-06 | 2022-01-10 | 58 | 2022-01-06 | 2022-01-10 | 3d | 9d | 0d | Kandon | 24h | 2,400 | 2,400 |
| 61 | 4.2 | Implementation Phase Complete | milestone | 0d | 2022-01-10 | 2022-01-10 | 60 | 2022-01-10 | 2022-01-10 | 0d | 9d | 4d |  |  |  |  |
| 62 | 5 | **Deployment** |  | 8d | 2022-01-15 | 2022-01-25 |  | 2022-01-15 | 2022-01-25 | 8d |  |  |  | 40h | 4,000 | 4,000 |
| 63 | 5.1 | **Deploy Infra** |  | 5d | 2022-01-17 | 2022-01-21 |  | 2022-01-17 | 2022-01-21 | 5d | 5d |  |  | 40h | 4,000 | 4,000 |
| 64 | 5.1.1 | Deployment Architecture setup |  | 3d | 2022-01-17 | 2022-01-19 | 61 | 2022-01-17 | 2022-01-19 | 3d | 5d | 0d | Kandon | 24h | 2,400 | 2,400 |
| 65 | 5.1.2 | Staging and Production Server Testing |  | 2d | 2022-01-20 | 2022-01-21 | 64 | 2022-01-20 | 2022-01-21 | 2d | 5d | 0d | Jarinya | 16h | 1,600 | 1,600 |
| 66 | 6.2 | Deployment Complete | milestone | 0d | 2022-01-21 | 2022-01-21 | 65 | 2022-01-21 | 2022-01-21 | 0d | 5d | 2d |  |  |  |  |
| 67 | 6 | **User Manual Review** |  | 5d | 2022-01-26 | 2022-02-01 |  | 2022-01-26 | 2022-02-01 | 5d |  |  |  | 48h | 4,800 | 3,200 |
| 68 | 6.1 | **User Manual** |  | 2d | 2022-01-26 | 2022-01-27 |  | 2022-01-26 | 2022-01-27 | 2d | 3d |  |  | 48h | 4,800 | 3,200 |
| 69 | 6.1.1 | Review and Approve User Manual |  | 2d | 2022-01-26 | 2022-01-27 | 66 | 2022-01-26 | 2022-01-27 | 2d | 3d |  | Kandon; Advisor; Jarinya | 48h | 4,800 | 3,200 |
